# Project Plan

Schedule from MS Project, 2008-01-01 to 2008-04-22.

## Calendars

- Standard: Mon-Fri 08:00-12:00, 13:00-17:00; Sat-Sun off.

## Schedule

| ID | WBS | Task | Type | Duration | Start | Finish | Predecessors | Total slack |
| --- | --- | --- | --- | --- | --- | --- | --- | --- |
| 2 | 1 | **PROJECT PLAN** |  | 81d | 2008-01-01 | 2008-04-22 |  | 0d |
| 4 | 1.1 | **Project Initiation** |  | 20d | 2008-01-01 | 2008-01-28 |  | 0d |
| 5 | 1.1.1 | **Develop Business Case** |  | 4d | 2008-01-01 | 2008-01-04 |  | 0d |
| 6 | 1.1.1.1 | Perform Options Analysis |  | 1d | 2008-01-01 | 2008-01-01 |  | 0d |
| 7 | 1.1.1.2 | Perform Cost Benefit Analysis |  | 1d | 2008-01-02 | 2008-01-02 | 6 | 0d |
| 8 | 1.1.1.3 | Perform Risk Assessment |  | 1d | 2008-01-03 | 2008-01-03 | 7 | 0d |
| 9 | 1.1.1.4 | Document Business Case |  | 1d | 2008-01-04 | 2008-01-04 | 8 | 0d |
| 10 | 1.1.1.5 | Business Case Approved | milestone | 0d | 2008-01-04 | 2008-01-04 | 9 | 0d |
| 11 | 1.1.2 | **Perform Feasibility Study** |  | 5d | 2008-01-07 | 2008-01-11 |  | 0d |
| 12 | 1.1.2.1 | Problem Analysis |  | 1d | 2008-01-07 | 2008-01-07 | 10 | 0d |
| 13 | 1.1.2.2 | Requirements Analysis |  | 1d | 2008-01-08 | 2008-01-08 | 12 | 0d |
| 14 | 1.1.2.3 | Feasibility Assessment |  | 1d | 2008-01-09 | 2008-01-09 | 13 | 0d |
| 15 | 1.1.2.4 | Feasibility Ranking & Results |  | 1d | 2008-01-10 | 2008-01-10 | 14 | 0d |
| 16 | 1.1.2.5 | Document Feasibility Study |  | 1d | 2008-01-11 | 2008-01-11 | 15 | 0d |
| 17 | 1.1.2.6 | Feasibility Study Approved | milestone | 0d | 2008-01-11 | 2008-01-11 | 16 | 0d |
| 18 | 1.1.3 | **Establish Project Charter** |  | 4d | 2008-01-14 | 2008-01-17 |  | 0d |
| 19 | 1.1.3.1 | Identify Project Scope |  | 1d | 2008-01-14 | 2008-01-14 | 17 | 0d |
| 20 | 1.1.3.2 | Identify Project Structure |  | 1d | 2008-01-15 | 2008-01-15 | 19 | 0d |
| 21 | 1.1.3.3 | Identify Project Processes |  | 1d | 2008-01-16 | 2008-01-16 | 20 | 0d |
| 22 | 1.1.3.4 | Document Project Charter |  | 1d | 2008-01-17 | 2008-01-17 | 21 | 0d |
| 23 | 1.1.3.5 | Project Charter Approved | milestone | 0d | 2008-01-17 | 2008-01-17 | 22 | 0d |
| 24 | 1.1.4 | **Appoint Project Team** |  | 3d | 2008-01-18 | 2008-01-22 |  | 0d |
| 25 | 1.1.4.1 | Appoint Project Sponsor |  | 1d | 2008-01-18 | 2008-01-18 | 23 | 0d |
| 26 | 1.1.4.2 | Appoint Project Manager |  | 1d | 2008-01-21 | 2008-01-21 | 25 | 0d |
| 27 | 1.1.4.3 | Appoint Project Team |  | 1d | 2008-01-22 | 2008-01-22 | 26 | 0d |
| 28 | 1.1.4.4 | Project Team Appointed | milestone | 0d | 2008-01-22 | 2008-01-22 | 27 | 0d |

| ID | WBS | Task | Type | Duration | Start | Finish | Predecessors | Total slack |
| --- | --- | --- | --- | --- | --- | --- | --- | --- |
| 29 | 1.1.5 | **Set-up Project Office** |  | 3d | 2008-01-23 | 2008-01-25 |  | 0d |
| 30 | 1.1.5.1 | Procure Office Premises |  | 1d | 2008-01-23 | 2008-01-23 | 28 | 0d |
| 31 | 1.1.5.2 | Procure Project Assets |  | 1d | 2008-01-24 | 2008-01-24 | 30 | 0d |
| 32 | 1.1.5.3 | Build Physical Office Environment |  | 1d | 2008-01-25 | 2008-01-25 | 31 | 0d |
| 33 | 1.1.5.4 | Project Office Established | milestone | 0d | 2008-01-25 | 2008-01-25 | 32 | 0d |
| 34 | 1.1.6 | Perform Stage-Gate |  | 1d | 2008-01-28 | 2008-01-28 | 33 | 0d |
| 36 | 1.2 | **Project Planning** |  | 49d | 2008-01-29 | 2008-04-04 |  | 0d |
| 37 | 1.2.1 | **Create Project Plan** |  | 9d | 2008-01-29 | 2008-02-08 |  | 0d |
| 38 | 1.2.1.1 | Identify Milestones |  | 1d | 2008-01-29 | 2008-01-29 | 34 | 0d |
| 39 | 1.2.1.2 | Identify Phases |  | 1d | 2008-01-30 | 2008-01-30 | 38 | 0d |
| 40 | 1.2.1.3 | Identify Activities |  | 1d | 2008-01-31 | 2008-01-31 | 39 | 0d |
| 41 | 1.2.1.4 | Identify Tasks |  | 1d | 2008-02-01 | 2008-02-01 | 40 | 0d |
| 42 | 1.2.1.5 | Identify Effort |  | 1d | 2008-02-04 | 2008-02-04 | 41 | 0d |
| 43 | 1.2.1.6 | Identify Resources |  | 1d | 2008-02-05 | 2008-02-05 | 42 | 0d |
| 44 | 1.2.1.7 | Identify Schedule |  | 1d | 2008-02-06 | 2008-02-06 | 43 | 0d |
| 45 | 1.2.1.8 | Identify Dependencies |  | 1d | 2008-02-07 | 2008-02-07 | 44 | 0d |
| 46 | 1.2.1.9 | Document Project Plan |  | 1d | 2008-02-08 | 2008-02-08 | 45 | 0d |
| 47 | 1.2.1.10 | Project Plan Approved | milestone | 0d | 2008-02-08 | 2008-02-08 | 46 | 0d |
| 48 | 1.2.2 | **Create Resource Plan** |  | 5d | 2008-02-11 | 2008-02-15 |  | 0d |
| 49 | 1.2.2.1 | List Labour Resources |  | 1d | 2008-02-11 | 2008-02-11 | 47 | 0d |
| 50 | 1.2.2.2 | List Equipment Resources |  | 1d | 2008-02-12 | 2008-02-12 | 49 | 0d |
| 51 | 1.2.2.3 | List Material Resources |  | 1d | 2008-02-13 | 2008-02-13 | 50 | 0d |
| 52 | 1.2.2.4 | Schedule Resources |  | 1d | 2008-02-14 | 2008-02-14 | 51 | 0d |
| 53 | 1.2.2.5 | Document Resource Plan |  | 1d | 2008-02-15 | 2008-02-15 | 52 | 0d |
| 54 | 1.2.2.6 | Resource Plan Approved | milestone | 0d | 2008-02-15 | 2008-02-15 | 53 | 0d |

| ID | WBS | Task | Type | Duration | Start | Finish | Predecessors | Total slack |
| --- | --- | --- | --- | --- | --- | --- | --- | --- |
| 55 | 1.2.3 | **Create Financial Plan** |  | 5d | 2008-02-18 | 2008-02-22 |  | 0d |
| 56 | 1.2.3.1 | Itemise Labour Costs |  | 1d | 2008-02-18 | 2008-02-18 | 54 | 0d |
| 57 | 1.2.3.2 | Itemise Equipment Costs |  | 1d | 2008-02-19 | 2008-02-19 | 56 | 0d |
| 58 | 1.2.3.3 | Itemise Material Costs |  | 1d | 2008-02-20 | 2008-02-20 | 57 | 0d |
| 59 | 1.2.3.4 | Schedule Costs |  | 1d | 2008-02-21 | 2008-02-21 | 58 | 0d |
| 60 | 1.2.3.5 | Document Financial Plan |  | 1d | 2008-02-22 | 2008-02-22 | 59 | 0d |
| 61 | 1.2.3.6 | Financial Plan Approved | milestone | 0d | 2008-02-22 | 2008-02-22 | 60 | 0d |
| 62 | 1.2.4 | **Create Quality Plan** |  | 5d | 2008-02-25 | 2008-02-29 |  | 0d |
| 63 | 1.2.4.1 | Identify Quality Targets |  | 1d | 2008-02-25 | 2008-02-25 | 61 | 0d |
| 64 | 1.2.4.2 | Identify Quality Assurance Techniques |  | 1d | 2008-02-26 | 2008-02-26 | 63 | 0d |
| 65 | 1.2.4.3 | Identify Quality Control Techniques |  | 1d | 2008-02-27 | 2008-02-27 | 64 | 0d |
| 66 | 1.2.4.4 | Identify Quality Management Processes |  | 1d | 2008-02-28 | 2008-02-28 | 65 | 0d |
| 67 | 1.2.4.5 | Document Quality Plan |  | 1d | 2008-02-29 | 2008-02-29 | 66 | 0d |
| 68 | 1.2.4.6 | Quality Plan Approved | milestone | 0d | 2008-02-29 | 2008-02-29 | 67 | 0d |
| 69 | 1.2.5 | **Create Risk Plan** |  | 6d | 2008-03-03 | 2008-03-10 |  | 0d |
| 70 | 1.2.5.1 | Identify Potential Risks |  | 1d | 2008-03-03 | 2008-03-03 | 68 | 0d |
| 71 | 1.2.5.2 | Quantify Risk Likelihood |  | 1d | 2008-03-04 | 2008-03-04 | 70 | 0d |
| 72 | 1.2.5.3 | Quantify Risk Impact |  | 1d | 2008-03-05 | 2008-03-05 | 71 | 0d |
| 73 | 1.2.5.4 | Determine Risk Priority |  | 1d | 2008-03-06 | 2008-03-06 | 72 | 0d |
| 74 | 1.2.5.5 | Identify Risk Mitigation Activities |  | 1d | 2008-03-07 | 2008-03-07 | 73 | 0d |
| 75 | 1.2.5.6 | Document Risk Plan |  | 1d | 2008-03-10 | 2008-03-10 | 74 | 0d |
| 76 | 1.2.5.7 | Risk Plan Approved | milestone | 0d | 2008-03-10 | 2008-03-10 | 75 | 0d |
| 77 | 1.2.6 | **Create Acceptance Plan** |  | 4d | 2008-03-11 | 2008-03-14 |  | 0d |
| 78 | 1.2.6.1 | Identify Acceptance Milestones |  | 1d | 2008-03-11 | 2008-03-11 | 76 | 0d |
| 79 | 1.2.6.2 | Identify Acceptance Criteria |  | 1d | 2008-03-12 | 2008-03-12 | 78 | 0d |
| 80 | 1.2.6.3 | Identify Acceptance Schedule |  | 1d | 2008-03-13 | 2008-03-13 | 79 | 0d |
| 81 | 1.2.6.4 | Document Acceptance Plan |  | 1d | 2008-03-14 | 2008-03-14 | 80 | 0d |
| 82 | 1.2.6.5 | Acceptance Plan Approved | milestone | 0d | 2008-03-14 | 2008-03-14 | 81 | 0d |

| ID | WBS | Task | Type | Duration | Start | Finish | Predecessors | Total slack | Free slack |
| --- | --- | --- | --- | --- | --- | --- | --- | --- | --- |
| 83 | 1.2.7 | **Create Communications Plan** |  | 4d | 2008-03-17 | 2008-03-20 |  | 0d |  |
| 84 | 1.2.7.1 | Identify Communications Requirements |  | 1d | 2008-03-17 | 2008-03-17 | 82 | 0d |  |
| 85 | 1.2.7.2 | List Communications Activities |  | 1d | 2008-03-18 | 2008-03-18 | 84 | 0d |  |
| 86 | 1.2.7.3 | Identify Communications Schedule |  | 1d | 2008-03-19 | 2008-03-19 | 85 | 0d |  |
| 87 | 1.2.7.4 | Document Communications Plan |  | 1d | 2008-03-20 | 2008-03-20 | 86 | 0d |  |
| 88 | 1.2.7.5 | Communications Plan Approved | milestone | 0d | 2008-03-20 | 2008-03-20 | 87 | 0d |  |
| 89 | 1.2.8 | **Create Procurement Plan** |  | 4d | 2008-03-21 | 2008-03-26 |  | 0d |  |
| 90 | 1.2.8.1 | Identify Required Products |  | 1d | 2008-03-21 | 2008-03-21 | 88 | 0d |  |
| 91 | 1.2.8.2 | Undertake Market Research |  | 1d | 2008-03-24 | 2008-03-24 | 90 | 0d |  |
| 92 | 1.2.8.3 | Identify Procurement Schedule |  | 1d | 2008-03-25 | 2008-03-25 | 91 | 0d |  |
| 93 | 1.2.8.4 | Document Procurement Plan |  | 1d | 2008-03-26 | 2008-03-26 | 92 | 0d |  |
| 94 | 1.2.8.5 | Procurement Plan Approved | milestone | 0d | 2008-03-26 | 2008-03-26 | 93 | 0d |  |
| 95 | 1.2.9 | **Contract Suppliers** |  | 7d | 2008-03-27 | 2008-04-04 |  | 0d |  |
| 96 | 1.2.9.1 | Document Statement of Work (SOW) |  | 1d | 2008-03-27 | 2008-03-27 | 94 | 0d |  |
| 97 | 1.2.9.2 | Document and Release RFI |  | 1d | 2008-03-28 | 2008-03-28 | 96 | 0d |  |
| 98 | 1.2.9.3 | Identify Supplier Shortlist |  | 1d | 2008-03-31 | 2008-03-31 | 97 | 0d |  |
| 99 | 1.2.9.4 | Document and Release RFP |  | 1d | 2008-04-01 | 2008-04-01 | 98 | 0d |  |
| 100 | 1.2.9.5 | Select Preferred Supplier |  | 1d | 2008-04-02 | 2008-04-02 | 99 | 0d |  |
| 101 | 1.2.9.6 | Negotiate Supplier Contract |  | 1d | 2008-04-03 | 2008-04-03 | 100 | 0d |  |
| 102 | 1.2.9.7 | Supplier Contract Approved |  | 1d | 2008-04-04 | 2008-04-04 | 101 | 0d |  |
| 103 | 1.2.10 | Perform Stage-Gate | milestone | 0d | 2008-04-04 | 2008-04-04 | 102 | 0d |  |
| 105 | 1.3 | **Project Execution** |  | 5d | 2008-04-07 | 2008-04-11 |  | 0d |  |
| 106 | 1.3.1 | **Build Deliverables** |  | 4d | 2008-04-07 | 2008-04-10 |  | 1d |  |
| 107 | 1.3.1.1 | Build Project Deliverables |  | 3d | 2008-04-07 | 2008-04-09 | 103 | 1d | 0d |
| 108 | 1.3.1.2 | Implement Project Deliverables |  | 1d | 2008-04-10 | 2008-04-10 | 107 | 1d | 0d |
| 109 | 1.3.1.3 | Project Deliverables Implemented | milestone | 0d | 2008-04-10 | 2008-04-10 | 108 | 1d |  |

| ID | WBS | Task | Type | Duration | Start | Finish | Predecessors | Total slack |
| --- | --- | --- | --- | --- | --- | --- | --- | --- |
| 110 | 1.3.2 | **Monitoring and Control** |  | 5d | 2008-04-07 | 2008-04-11 |  | 0d |
| 111 | 1.3.2.1 | Perform Time Management |  | 5d | 2008-04-07 | 2008-04-11 | 103 | 0d |
| 112 | 1.3.2.2 | Perform Cost Management |  | 5d | 2008-04-07 | 2008-04-11 | 103 | 0d |
| 113 | 1.3.2.3 | Perform Quality Management |  | 5d | 2008-04-07 | 2008-04-11 | 103 | 0d |
| 114 | 1.3.2.4 | Perform Change Management |  | 5d | 2008-04-07 | 2008-04-11 | 103 | 0d |
| 115 | 1.3.2.5 | Perform Risk Management |  | 5d | 2008-04-07 | 2008-04-11 | 103 | 0d |
| 116 | 1.3.2.6 | Perform Issue Management |  | 5d | 2008-04-07 | 2008-04-11 | 103 | 0d |
| 117 | 1.3.2.7 | Perform Procurement Management |  | 5d | 2008-04-07 | 2008-04-11 | 103 | 0d |
| 118 | 1.3.2.8 | Perform Acceptance Management |  | 5d | 2008-04-07 | 2008-04-11 | 103 | 0d |
| 119 | 1.3.2.9 | Perform Communication Management |  | 5d | 2008-04-07 | 2008-04-11 | 103 | 0d |
| 120 | 1.3.3 | Project Complete | milestone | 0d | 2008-04-11 | 2008-04-11 | 119, 118, 117, 116, 115, 114, 113, 112, 111, 109 | 0d |
| 122 | 1.4 | **Project Closure** |  | 7d | 2008-04-14 | 2008-04-22 |  | 0d |
| 123 | 1.4.1 | **Perform Project Closure** |  | 6d | 2008-04-14 | 2008-04-21 |  | 0d |
| 124 | 1.4.1.1 | Register Assets in Financial System |  | 1d | 2008-04-14 | 2008-04-14 | 120 | 0d |
| 125 | 1.4.1.2 | Perform Customer Signoff |  | 1d | 2008-04-15 | 2008-04-15 | 124 | 0d |
| 126 | 1.4.1.3 | Release Documentation & Equipment |  | 1d | 2008-04-16 | 2008-04-16 | 125 | 0d |
| 127 | 1.4.1.4 | Release Project Resources |  | 1d | 2008-04-17 | 2008-04-17 | 126 | 0d |
| 128 | 1.4.1.5 | Perform Supplier Contract Closure |  | 1d | 2008-04-18 | 2008-04-18 | 127 | 0d |
| 129 | 1.4.1.6 | Document Project Closure Report |  | 1d | 2008-04-21 | 2008-04-21 | 128 | 0d |
| 130 | 1.4.2 | **Review Project Completion** |  | 1d | 2008-04-22 | 2008-04-22 |  | 0d |
| 131 | 1.4.2.1 | Post Implementation Review |  | 1d | 2008-04-22 | 2008-04-22 | 129 | 0d |
| 132 | 1.4.2.2 | Project Closed | milestone | 0d | 2008-04-22 | 2008-04-22 | 131 | 0d |
